# sanxian

Schedule from MS Project, 2013-12-02 to 2014-02-28.

## Calendars

- 标准: Mon-Fri 08:00-12:00, 13:00-17:00; Sat-Sun off. Exceptions (off unless hours are given): 2013-12-21 08:00-12:00, 13:00-17:00, 2013-12-28 08:00-12:00, 13:00-17:00.

## Resources

| Resource |
| --- |
| 罗裕 |
| 郭潘潘 |
| 侯辉 |
| 严兵峰 |
| 张林生 |
| 肖建强 |
| 王剑锋 |
| 王彦炳 |
| 杨斌 |
| 姚李 |
| 王苗苗 |
| 谭本龙 |
| 刘畅 |

## Schedule

| ID | WBS | Task | Duration | Start | Finish | Predecessors | Baseline start | Baseline finish | Baseline duration | Total slack | Constraint | Deadline | Resources | Work |
| --- | --- | --- | --- | --- | --- | --- | --- | --- | --- | --- | --- | --- | --- | --- |
| 1 | 1 | **PC端** | 67d? | 2013-12-02 | 2014-02-28 |  | 2013-12-02 | 2014-02-24 | 63d? | 0d |  | 2014-02-28 |  | 11848h |
| 2 | 1.1 | 注册登录 | 20d? | 2013-12-21 | 2014-01-15 |  | 2013-12-21 | 2014-01-15 | 20d? | 32d | finish no earlier than 2014-01-15 |  | 王彦炳; 杨斌; 姚李 | 480h |
| 3 | 1.2 | **创意大厅** | 34d? | 2013-12-03 | 2014-01-15 |  | 2013-12-03 | 2014-01-15 | 34d? | 32d |  |  | 刘畅; 王苗苗; 谭本龙; 王彦炳; 姚李 | 4080h |
| 4 | 1.2.1 | 创意大厅 | 34d? | 2013-12-03 | 2014-01-15 |  | 2013-12-03 | 2014-01-15 | 34d? | 32d | finish no earlier than 2014-01-15 |  | 刘畅; 王苗苗; 谭本龙; 王彦炳; 姚李 | 1360h |
| 5 | 1.2.2 | 我的创意 | 34d? | 2013-12-03 | 2014-01-15 |  | 2013-12-03 | 2014-01-15 | 34d? | 32d | finish no earlier than 2014-01-15 |  | 刘畅; 王苗苗; 谭本龙; 王彦炳; 姚李 | 1360h |
| 6 | 1.3 | **项目大厅** | 20d? | 2013-12-21 | 2014-01-15 |  | 2013-12-21 | 2014-01-15 | 20d? | 32d |  |  | 刘畅; 王苗苗; 谭本龙; 王彦炳; 姚李 | 2400h |
| 7 | 1.3.1 | 项目大厅 | 20d? | 2013-12-21 | 2014-01-15 |  | 2013-12-21 | 2014-01-15 | 20d? | 32d | finish no earlier than 2014-01-15 |  | 刘畅; 王苗苗; 谭本龙; 王彦炳; 姚李 | 800h |
| 8 | 1.3.2 | 我的项目 | 20d? | 2013-12-21 | 2014-01-15 |  | 2013-12-21 | 2014-01-15 | 20d? | 32d | finish no earlier than 2014-01-15 |  | 刘畅; 王苗苗; 谭本龙; 王彦炳; 姚李 | 800h |
| 9 | 1.4 | **商品大厅** | 43d? | 2013-12-02 | 2014-01-27 |  | 2013-12-02 | 2014-01-27 | 43d? | 24d |  |  | 王苗苗; 杨斌; 谭本龙 | 2064h |
| 10 | 1.4.1 | 商品大厅&买家订单相关&购物车 | 43d? | 2013-12-02 | 2014-01-27 |  | 2013-12-02 | 2014-01-27 | 43d? | 24d | finish no earlier than 2014-01-27 |  | 王苗苗; 杨斌; 谭本龙 | 1032h |
| 11 | 1.5 | **个人中心** | 46d? | 2013-12-28 | 2014-02-28 |  | 2013-12-28 | 2014-02-24 | 42d? | 0d |  |  | 严兵峰 | 1328h |
| 12 | 1.5.1 | **账户中心** | 36d? | 2013-12-28 | 2014-02-14 |  | 2013-12-28 | 2014-02-12 | 34d? | 0d |  |  | 严兵峰 | 800h |
| 13 | 1.5.1.1 | **安全设置(未设置)** | 4d | 2013-12-28 | 2014-01-01 |  | 2013-12-28 | 2014-01-01 | 4d | 0d |  |  | 严兵峰 | 64h |
| 14 | 1.5.1.1.1 | 修改登录密码 | 1d | 2013-12-28 | 2013-12-28 |  | 2013-12-28 | 2013-12-28 | 1d | 0d | start no earlier than 2013-12-28 |  | 严兵峰 | 8h |
| 15 | 1.5.1.1.2 | 实名认证 | 1d | 2013-12-30 | 2013-12-30 | 14 | 2013-12-30 | 2013-12-30 | 1d | 0d |  |  | 严兵峰 | 8h |
| 16 | 1.5.1.1.3 | 手机验证 | 1d | 2013-12-31 | 2013-12-31 | 15 | 2013-12-31 | 2013-12-31 | 1d | 0d |  |  | 严兵峰 | 8h |
| 17 | 1.5.1.1.4 | 启用支付密码 | 1d | 2014-01-01 | 2014-01-01 | 16 | 2014-01-01 | 2014-01-01 | 1d | 0d |  |  | 严兵峰 | 8h |
| 18 | 1.5.1.2 | 个人资料 | 1d | 2014-01-02 | 2014-01-02 | 13 | 2014-01-02 | 2014-01-02 | 1d | 0d |  |  | 严兵峰 | 8h |
| 19 | 1.5.1.3 | **安全设置(已设置)** | 4d? | 2014-01-03 | 2014-01-08 | 18 | 2014-01-03 | 2014-01-08 | 4d? | 0d |  |  | 严兵峰 | 64h |
| 20 | 1.5.1.3.1 | 修改邮箱 | 1d? | 2014-01-03 | 2014-01-03 |  | 2014-01-03 | 2014-01-03 | 1d? | 0d |  |  | 严兵峰 | 8h |
| 21 | 1.5.1.3.2 | 修改已验证手机 | 1d? | 2014-01-06 | 2014-01-06 | 20 | 2014-01-06 | 2014-01-06 | 1d? | 0d |  |  | 严兵峰 | 8h |
| 22 | 1.5.1.3.3 | 邮箱验证 | 1d? | 2014-01-07 | 2014-01-07 | 21 | 2014-01-07 | 2014-01-07 | 1d? | 0d |  |  | 严兵峰 | 8h |
| 23 | 1.5.1.3.4 | 收货地址管理 | 1d? | 2014-01-08 | 2014-01-08 | 22 | 2014-01-08 | 2014-01-08 | 1d? | 0d |  |  | 严兵峰 | 8h |
| 24 | 1.5.1.4 | 用户邀请 | 1d? | 2014-01-09 | 2014-01-09 | 19 | 2014-01-09 | 2014-01-09 | 1d? | 0d |  |  | 严兵峰 | 8h |

| ID | WBS | Task | Duration | Start | Finish | Predecessors | Baseline start | Baseline finish | Baseline duration | Total slack | Free slack | Constraint | Resources | Work |
| --- | --- | --- | --- | --- | --- | --- | --- | --- | --- | --- | --- | --- | --- | --- |
| 25 | 1.5.1.5 | **第三方授权** | 3d | 2014-01-10 | 2014-01-14 | 24 | 2014-01-10 | 2014-01-14 | 3d | 0d |  |  | 严兵峰 | 48h |
| 26 | 1.5.1.5.1 | 解除绑定 | 3d | 2014-01-10 | 2014-01-14 |  | 2014-01-10 | 2014-01-14 | 3d | 0d |  |  | 严兵峰 | 24h |
| 27 | 1.5.1.6 | **购买流程** | 17d? | 2014-01-15 | 2014-02-06 | 25 | 2014-01-15 | 2014-02-04 | 15d? | 0d |  |  | 严兵峰 | 272h |
| 28 | 1.5.1.6.1 | 直接购买 | 1d? | 2014-01-15 | 2014-01-15 |  | 2014-01-15 | 2014-01-15 | 1d? | 0d |  |  | 严兵峰 | 8h |
| 29 | 1.5.1.6.2 | 购物车 | 3d | 2014-01-16 | 2014-01-20 | 28 | 2014-01-16 | 2014-01-17 | 2d | 0d |  |  | 严兵峰 | 24h |
| 30 | 1.5.1.6.3 | 我的订单 | 2d | 2014-01-21 | 2014-01-22 | 29 | 2014-01-20 | 2014-01-20 | 1d? | 0d |  |  | 严兵峰 | 16h |
| 31 | 1.5.1.6.4 | 支付 | 4d | 2014-01-23 | 2014-01-28 | 30 | 2014-01-21 | 2014-01-24 | 4d | 0d |  |  | 严兵峰 | 32h |
| 32 | 1.5.1.6.5 | 确认收货 | 1d? | 2014-01-29 | 2014-01-29 | 31 | 2014-01-27 | 2014-01-27 | 1d? | 0d |  |  | 严兵峰 | 8h |
| 33 | 1.5.1.6.6 | 退换货申请 | 4d | 2014-01-30 | 2014-02-04 | 32 | 2014-01-28 | 2014-01-31 | 4d | 0d |  |  | 严兵峰 | 32h |
| 34 | 1.5.1.6.7 | 我的创意 | 1d? | 2014-02-05 | 2014-02-05 | 33 | 2014-02-03 | 2014-02-03 | 1d? | 0d |  |  | 严兵峰 | 8h |
| 35 | 1.5.1.6.8 | 我的项目 | 1d? | 2014-02-06 | 2014-02-06 | 34 | 2014-02-04 | 2014-02-04 | 1d? | 0d |  |  | 严兵峰 | 8h |
| 36 | 1.5.1.7 | 微银行 | 4d | 2014-02-07 | 2014-02-12 | 27 | 2014-02-05 | 2014-02-10 | 4d | 0d |  |  | 严兵峰 | 32h |
| 37 | 1.5.1.8 | 微博 | 2d | 2014-02-13 | 2014-02-14 | 36 | 2014-02-11 | 2014-02-12 | 2d | 0d |  |  | 严兵峰 | 16h |
| 38 | 1.5.2 | **我的部落** | 10d | 2014-02-17 | 2014-02-28 | 12 | 2014-02-13 | 2014-02-24 | 8d | 0d |  |  | 严兵峰 | 160h |
| 39 | 1.5.2.1 | 微超市 | 3d | 2014-02-17 | 2014-02-19 |  | 2014-02-13 | 2014-02-14 | 2d | 0d |  |  | 严兵峰 | 24h |
| 40 | 1.5.2.2 | 微信 | 2d | 2014-02-20 | 2014-02-21 | 39 | 2014-02-17 | 2014-02-18 | 2d | 0d |  |  | 严兵峰 | 16h |
| 41 | 1.5.2.3 | 微世界 | 2d | 2014-02-24 | 2014-02-25 | 40 | 2014-02-19 | 2014-02-20 | 2d | 0d |  |  | 严兵峰 | 16h |
| 42 | 1.5.2.4 | 我的好友 | 2d | 2014-02-26 | 2014-02-27 | 41 | 2014-02-21 | 2014-02-21 | 1d | 0d |  |  | 严兵峰 | 16h |
| 43 | 1.5.2.5 | 我的收藏夹 | 1d | 2014-02-28 | 2014-02-28 | 42 | 2014-02-24 | 2014-02-24 | 1d | 0d |  |  | 严兵峰 | 8h |
| 44 | 1.6 | **企业中心** | 13d? | 2013-12-28 | 2014-01-14 |  | 2013-12-28 | 2014-01-14 | 13d? | 33d |  |  | 张林生 | 312h |
| 45 | 1.6.1 | **企业资料** | 3d | 2013-12-28 | 2013-12-31 |  | 2013-12-28 | 2013-12-31 | 3d | 33d | 0d |  | 张林生 | 48h |
| 46 | 1.6.1.1 | 企业资料信息页 | 3d | 2013-12-28 | 2013-12-31 |  | 2013-12-28 | 2013-12-31 | 3d | 33d |  | start no earlier than 2013-12-28 | 张林生 | 24h |
| 47 | 1.6.2 | **手机号码修改** | 3d? | 2014-01-01 | 2014-01-03 | 45 | 2014-01-01 | 2014-01-03 | 3d? | 33d | 0d |  | 张林生 | 48h |
| 48 | 1.6.2.1 | 完成 | 1d? | 2014-01-01 | 2014-01-01 |  | 2014-01-01 | 2014-01-01 | 1d? | 33d | 0d |  | 张林生 | 8h |
| 49 | 1.6.2.2 | 重置手机 | 1d? | 2014-01-02 | 2014-01-02 | 48 | 2014-01-02 | 2014-01-02 | 1d? | 33d | 0d |  | 张林生 | 8h |
| 50 | 1.6.2.3 | 验证身份 | 1d? | 2014-01-03 | 2014-01-03 | 49 | 2014-01-03 | 2014-01-03 | 1d? | 33d |  |  | 张林生 | 8h |

| ID | WBS | Task | Duration | Start | Finish | Predecessors | Baseline start | Baseline finish | Baseline duration | Total slack | Free slack | Constraint | Resources | Work |
| --- | --- | --- | --- | --- | --- | --- | --- | --- | --- | --- | --- | --- | --- | --- |
| 51 | 1.6.3 | **邮箱修改** | 2d | 2014-01-06 | 2014-01-07 | 47 | 2014-01-06 | 2014-01-07 | 2d | 33d | 0d |  | 张林生 | 32h |
| 52 | 1.6.3.1 | 验证身份 | 0.5d | 2014-01-06 | 2014-01-06 |  | 2014-01-06 | 2014-01-06 | 0.5d | 33d | 0d |  | 张林生 | 4h |
| 53 | 1.6.3.2 | 重置邮箱 | 0.5d | 2014-01-06 | 2014-01-06 | 52 | 2014-01-06 | 2014-01-06 | 0.5d | 33d | 0d |  | 张林生 | 4h |
| 54 | 1.6.3.3 | 验证邮箱 | 0.5d | 2014-01-07 | 2014-01-07 | 53 | 2014-01-07 | 2014-01-07 | 0.5d | 33d | 0d |  | 张林生 | 4h |
| 55 | 1.6.3.4 | 完成 | 0.5d | 2014-01-07 | 2014-01-07 | 54 | 2014-01-07 | 2014-01-07 | 0.5d | 33d |  |  | 张林生 | 4h |
| 56 | 1.6.4 | **安全设置** | 3d | 2014-01-08 | 2014-01-10 | 51 | 2014-01-08 | 2014-01-10 | 3d | 33d | 0d |  | 张林生 | 48h |
| 57 | 1.6.4.1 | 安全中心 | 1d | 2014-01-08 | 2014-01-08 |  | 2014-01-08 | 2014-01-08 | 1d | 33d | 0d |  | 张林生 | 8h |
| 58 | 1.6.4.2 | 企业认证信息 | 2d | 2014-01-09 | 2014-01-10 | 57 | 2014-01-09 | 2014-01-10 | 2d | 33d |  |  | 张林生 | 16h |
| 59 | 1.6.5 | **我的投标** | 2d | 2014-01-13 | 2014-01-14 | 56 | 2014-01-13 | 2014-01-14 | 2d | 33d |  |  | 张林生 | 32h |
| 60 | 1.6.5.1 | 我投标的项目 | 1d | 2014-01-13 | 2014-01-13 |  | 2014-01-13 | 2014-01-13 | 1d | 33d | 0d |  | 张林生 | 8h |
| 61 | 1.6.5.2 | 我的收藏 | 1d | 2014-01-14 | 2014-01-14 | 60 | 2014-01-14 | 2014-01-14 | 1d | 33d |  |  | 张林生 | 8h |
| 62 | 1.7 | **招标大厅** | 16d? | 2013-12-28 | 2014-01-17 |  | 2013-12-28 | 2014-01-17 | 16d? | 30d |  |  | 肖建强 | 480h |
| 63 | 1.7.1 | **线下招标** | 7d? | 2013-12-28 | 2014-01-06 |  | 2013-12-28 | 2014-01-06 | 7d? | 30d | 0d |  | 肖建强 | 144h |
| 64 | 1.7.1.1 | 评标公示详情页 | 1d? | 2013-12-28 | 2013-12-28 |  | 2013-12-28 | 2013-12-28 | 1d? | 30d | 0d | start no earlier than 2013-12-28 | 肖建强 | 8h |
| 65 | 1.7.1.2 | 中标公示详情页 | 1d? | 2013-12-30 | 2013-12-30 | 64 | 2013-12-30 | 2013-12-30 | 1d? | 30d | 0d |  | 肖建强 | 8h |
| 66 | 1.7.1.3 | 主页 | 1d? | 2013-12-31 | 2013-12-31 | 65 | 2013-12-31 | 2013-12-31 | 1d? | 30d | 0d |  | 肖建强 | 8h |
| 67 | 1.7.1.4 | **招标公告** | 4d? | 2014-01-01 | 2014-01-06 | 66 | 2014-01-01 | 2014-01-06 | 4d? | 30d |  |  | 肖建强 | 64h |
| 68 | 1.7.1.4.1 | 列表页 | 1d? | 2014-01-01 | 2014-01-01 |  | 2014-01-01 | 2014-01-01 | 1d? | 30d | 0d |  | 肖建强 | 8h |
| 69 | 1.7.1.4.2 | 详情-未登录 | 1d? | 2014-01-02 | 2014-01-02 | 68 | 2014-01-02 | 2014-01-02 | 1d? | 30d | 0d |  | 肖建强 | 8h |
| 70 | 1.7.1.4.3 | 详情-已登录 | 1d? | 2014-01-03 | 2014-01-03 | 69 | 2014-01-03 | 2014-01-03 | 1d? | 30d | 0d |  | 肖建强 | 8h |
| 71 | 1.7.1.4.4 | 详情-信息变更页 | 1d? | 2014-01-06 | 2014-01-06 | 70 | 2014-01-06 | 2014-01-06 | 1d? | 30d |  |  | 肖建强 | 8h |
| 72 | 1.7.2 | **线上招标** | 9d? | 2014-01-07 | 2014-01-17 | 63 | 2014-01-07 | 2014-01-17 | 9d? | 30d |  |  | 肖建强 | 208h |
| 73 | 1.7.2.1 | 主页 | 1d? | 2014-01-07 | 2014-01-07 |  | 2014-01-07 | 2014-01-07 | 1d? | 30d | 0d |  | 肖建强 | 8h |
| 74 | 1.7.2.2 | **招标** | 5d? | 2014-01-08 | 2014-01-14 | 73 | 2014-01-08 | 2014-01-14 | 5d? | 30d | 0d |  | 肖建强 | 80h |
| 75 | 1.7.2.2.1 | 列表页 | 1d? | 2014-01-08 | 2014-01-08 |  | 2014-01-08 | 2014-01-08 | 1d? | 30d | 0d |  | 肖建强 | 8h |
| 76 | 1.7.2.2.2 | 详情页 | 1d? | 2014-01-09 | 2014-01-09 | 75 | 2014-01-09 | 2014-01-09 | 1d? | 30d | 0d |  | 肖建强 | 8h |
| 77 | 1.7.2.2.3 | 详情页-不需要交招标定金 | 1d? | 2014-01-10 | 2014-01-10 | 76 | 2014-01-10 | 2014-01-10 | 1d? | 30d | 0d |  | 肖建强 | 8h |
| 78 | 1.7.2.2.4 | 支付招标定金 | 1d? | 2014-01-13 | 2014-01-13 | 77 | 2014-01-13 | 2014-01-13 | 1d? | 30d | 0d |  | 肖建强 | 8h |
| 79 | 1.7.2.2.5 | 投标成功页面 | 1d? | 2014-01-14 | 2014-01-14 | 78 | 2014-01-14 | 2014-01-14 | 1d? | 30d |  |  | 肖建强 | 8h |

| ID | WBS | Task | Duration | Start | Finish | Predecessors | Baseline start | Baseline finish | Baseline duration | Total slack | Free slack | Constraint | Resources | Work |
| --- | --- | --- | --- | --- | --- | --- | --- | --- | --- | --- | --- | --- | --- | --- |
| 80 | 1.7.2.3 | **中标** | 3d? | 2014-01-15 | 2014-01-17 | 74 | 2014-01-15 | 2014-01-17 | 3d? | 30d |  |  | 肖建强 | 48h |
| 81 | 1.7.2.3.1 | 列表页 | 1d? | 2014-01-15 | 2014-01-15 |  | 2014-01-15 | 2014-01-15 | 1d? | 30d | 0d |  | 肖建强 | 8h |
| 82 | 1.7.2.3.2 | 中标详情页 | 1d? | 2014-01-16 | 2014-01-16 | 81 | 2014-01-16 | 2014-01-16 | 1d? | 30d | 0d |  | 肖建强 | 8h |
| 83 | 1.7.2.3.3 | 项目结束页面 | 1d? | 2014-01-17 | 2014-01-17 | 82 | 2014-01-17 | 2014-01-17 | 1d? | 30d |  |  | 肖建强 | 8h |
| 84 | 1.8 | 资金管理 | 42d? | 2014-01-02 | 2014-02-28 |  | 2013-12-28 | 2014-01-27 | 22d? | 0d |  | start no earlier than 2014-01-02 | 王剑锋 | 336h |
| 85 | 1.9 | iOS/Android接口 | 46d? | 2013-12-28 | 2014-02-28 |  | 2013-12-28 | 2014-01-27 | 22d? | 0d |  | finish no earlier than 2014-02-28 | 王剑锋 | 368h |
| 86 | 1.10 | **管理平台** | 11d? | 2013-12-23 | 2014-01-03 |  | 2013-12-28 | 2013-12-28 | 1d? | 40d |  |  |  |  |
| 87 | 1.10.1 | 虚拟公司管理（组织架构管理）&我的公司 | 1d? | 2014-01-03 | 2014-01-03 |  |  |  |  | 40d |  | start no earlier than 2014-01-03 |  |  |
| 88 | 1.10.2 | 虚拟公司管理（财务） | 1d? | 2013-12-23 | 2013-12-23 |  |  |  |  | 50d |  |  |  |  |
| 89 | 1.10.3 | 虚拟公司管理（研发） | 1d? | 2013-12-23 | 2013-12-23 |  |  |  |  | 50d |  |  |  |  |
| 90 | 1.10.4 | 虚拟公司管理（招标&质检） | 1d? | 2013-12-23 | 2013-12-23 |  |  |  |  | 50d |  |  |  |  |
| 91 | 1.10.5 | 虚拟公司管理（销售） | 1d? | 2013-12-23 | 2013-12-23 |  |  |  |  | 50d |  |  |  |  |
| 92 | 1.10.6 | 企业订单处理 | 1d? | 2013-12-23 | 2013-12-23 |  |  |  |  | 50d |  |  |  |  |
| 93 | 1.10.7 | 用户管理 | 1d? | 2013-12-23 | 2013-12-23 |  |  |  |  | 50d |  |  |  |  |
| 94 | 1.10.8 | 内容管理 | 1d? | 2013-12-23 | 2013-12-23 |  |  |  |  | 50d |  |  |  |  |
| 95 | 1.10.9 | 资金管理 | 1d? | 2013-12-23 | 2013-12-23 |  |  |  |  | 50d |  |  |  |  |
| 96 | 1.10.10 | 虚拟公司管理 | 1d? | 2013-12-23 | 2013-12-23 |  |  |  |  | 50d |  |  |  |  |
| 97 | 1.10.11 | 商品管理 | 1d? | 2013-12-23 | 2013-12-23 |  |  |  |  | 50d |  |  |  |  |
| 98 | 1.10.12 | 招投标管理 | 1d? | 2013-12-23 | 2013-12-23 |  |  |  |  | 50d |  |  |  |  |
| 99 | 1.10.13 | 消息工作台 | 1d? | 2013-12-23 | 2013-12-23 |  |  |  |  | 50d |  |  |  |  |
