# sanxian

Schedule from MS Project, 2013-12-28 to 2014-03-06.

## Calendars

- 标准: Mon-Fri 08:00-12:00, 13:00-17:00; Sat-Sun off. Exceptions (off unless hours are given): 2013-12-28 08:00-12:00, 13:00-17:00.

## Resources

| Resource |
| --- |
| 罗裕 |
| 郭潘潘 |
| 侯辉 |
| 罗 |
| Ios4 |
| 冷青章 |
| 李兵 |
| 谭晓芳 |

## Schedule

| ID | WBS | Task | Duration | Start | Finish | Predecessors | Total slack | Constraint | Resources | Work |
| --- | --- | --- | --- | --- | --- | --- | --- | --- | --- | --- |
| 1 | 1 | **IOS端** | 50d | 2013-12-28 | 2014-03-06 |  | 0d |  |  | 4188h |
| 2 | 1.1 | 欢迎页 | 1d | 2013-12-28 | 2013-12-28 |  | 0d | start no earlier than 2013-12-28 | 罗裕 | 8h |
| 3 | 1.2 | 注册 | 2d | 2013-12-30 | 2013-12-31 | 2 | 0d |  | 罗裕 | 16h |
| 4 | 1.3 | **登录** | 5d | 2014-01-01 | 2014-01-07 | 3 | 0d |  | 罗裕 | 80h |
| 5 | 1.3.1 | 登录页面 | 4d | 2014-01-01 | 2014-01-06 |  | 0d |  | 罗裕 | 32h |
| 6 | 1.3.2 | 找回密码 | 1d | 2014-01-07 | 2014-01-07 | 5 | 0d |  | 罗裕 | 8h |
| 7 | 1.4 | **首页** | 42d | 2014-01-08 | 2014-03-06 | 4 | 0d |  | 罗裕 | 1048h |
| 8 | 1.4.1 | **首页页面（创意，项目，商品的展示）** | 12d | 2014-01-08 | 2014-01-23 |  | 0d |  | 罗裕 | 192h |
| 9 | 1.4.1.1 | 首页页面(创意、商品、项目展示) | 5d | 2014-01-08 | 2014-01-14 |  | 0d |  | 罗裕 | 40h |
| 10 | 1.4.1.2 | 需求发布页（创意） | 2d | 2014-01-15 | 2014-01-16 | 9 | 0d |  | 罗裕 | 16h |
| 11 | 1.4.1.3 | 需求发布页（项目） | 5d | 2014-01-17 | 2014-01-23 | 10 | 0d |  | 罗裕 | 40h |
| 12 | 1.4.2 | **创意内容页** | 12d | 2014-01-24 | 2014-02-10 | 8 | 0d |  | 罗裕 | 232h |
| 13 | 1.4.2.1 | 创意内容页（宣传视频，支持人员，不看好人员） | 5d | 2014-01-24 | 2014-01-30 |  | 0d |  | 罗裕 | 40h |
| 14 | 1.4.2.2 | 详情介绍页 | 2d | 2014-01-31 | 2014-02-03 | 13 | 0d |  | 罗裕 | 16h |
| 15 | 1.4.2.3 | **项目成员** | 5d | 2014-02-04 | 2014-02-10 | 14 | 0d |  | 罗裕 | 80h |
| 16 | 1.4.2.3.1 | 项目成员 | 2d | 2014-02-04 | 2014-02-05 |  | 0d |  | 罗裕 | 16h |
| 17 | 1.4.2.3.2 | 项目成员详情 | 3d | 2014-02-06 | 2014-02-10 | 16 | 0d |  | 罗裕 | 24h |
| 18 | 1.4.3 | **项目内容页** | 11d | 2014-02-11 | 2014-02-25 | 12 | 0d |  | 罗裕 | 176h |
| 19 | 1.4.3.1 | 项目内容页 | 5d | 2014-02-11 | 2014-02-17 |  | 0d |  | 罗裕 | 40h |
| 20 | 1.4.3.2 | 我要预购 | 2d | 2014-02-18 | 2014-02-19 | 19 | 0d |  | 罗裕 | 16h |
| 21 | 1.4.3.3 | 分享 | 4d | 2014-02-20 | 2014-02-25 | 20 | 0d |  | 罗裕 | 32h |
| 22 | 1.4.4 | **商品内容页（即时购买）** | 7d | 2014-02-26 | 2014-03-06 | 18 | 0d |  | 罗裕 | 112h |
| 23 | 1.4.4.1 | 商品内容页(限时购买) | 2d | 2014-02-26 | 2014-02-27 |  | 0d |  | 罗裕 | 16h |
| 24 | 1.4.4.2 | 商品内容页（限时预购） | 2d | 2014-02-28 | 2014-03-03 | 23 | 0d |  | 罗裕 | 16h |
| 25 | 1.4.4.3 | 商品购买页 | 3d | 2014-03-04 | 2014-03-06 | 24 | 0d |  | 罗裕 | 24h |

| ID | WBS | Task | Duration | Start | Finish | Predecessors | Total slack | Free slack | Constraint | Resources | Work |
| --- | --- | --- | --- | --- | --- | --- | --- | --- | --- | --- | --- |
| 26 | 1.5 | **分类** | 7.5d | 2013-12-28 | 2014-01-07 |  | 22.5d | 0d |  | 李兵 | 168h |
| 27 | 1.5.1 | 分类首页 | 1.5d | 2013-12-28 | 2013-12-30 |  | 22.5d | 0d | start no earlier than 2013-12-28 | 李兵 | 12h |
| 28 | 1.5.2 | **列表页** | 6d | 2013-12-30 | 2014-01-07 | 27 | 22.5d |  |  | 李兵 | 96h |
| 29 | 1.5.2.1 | 列表页首页 | 2.5d | 2013-12-30 | 2014-01-01 |  | 22.5d | 0d |  | 李兵 | 20h |
| 30 | 1.5.2.2 | 列表－分类 | 1.5d | 2014-01-02 | 2014-01-03 | 29 | 22.5d | 0d |  | 李兵 | 12h |
| 31 | 1.5.2.3 | 列表－筛选 | 1d | 2014-01-03 | 2014-01-06 | 30 | 22.5d | 0d |  | 李兵 | 8h |
| 32 | 1.5.2.4 | 列表－搜索 | 1d | 2014-01-06 | 2014-01-07 | 31 | 22.5d |  |  | 李兵 | 8h |
| 33 | 1.6 | **讨论大厅** | 28d | 2014-01-07 | 2014-02-14 | 26 | 14.5d |  |  | 李兵 | 892h |
| 34 | 1.6.1 | 讨论大厅首页 | 1d | 2014-01-07 | 2014-01-08 |  | 22.5d | 0d | start no earlier than 2013-12-28 | 李兵 | 8h |
| 35 | 1.6.2 | **某项目讨论大厅** | 27d | 2014-01-08 | 2014-02-14 | 34 | 14.5d |  |  | 李兵 | 660h |
| 36 | 1.6.2.1 | 项目讨论大厅 | 1.5d | 2014-01-08 | 2014-01-09 |  | 22.5d | 0d |  | 李兵 | 12h |
| 37 | 1.6.2.2 | **主持中的话题** | 4d | 2014-01-10 | 2014-01-15 | 36 | 22.5d | 0d |  | 李兵 | 76h |
| 38 | 1.6.2.2.1 | 主持中的话题 | 1.5d | 2014-01-10 | 2014-01-13 |  | 22.5d | 0d |  | 李兵 | 12h |
| 39 | 1.6.2.2.2 | **信息助手页** | 1.5d | 2014-01-13 | 2014-01-14 | 38 | 22.5d | 0d |  | 李兵 | 24h |
| 40 | 1.6.2.2.2.1 | 信息助手页 | 0.5d | 2014-01-13 | 2014-01-13 |  | 22.5d | 0d |  | 李兵 | 4h |
| 41 | 1.6.2.2.2.2 | 发起投票 | 1d | 2014-01-14 | 2014-01-14 | 40 | 22.5d |  |  | 李兵 | 8h |
| 42 | 1.6.2.2.3 | 发表讨论 | 1d | 2014-01-15 | 2014-01-15 | 39 | 22.5d |  |  | 李兵 | 8h |
| 43 | 1.6.2.3 | **待参与信息** | 3d | 2014-01-16 | 2014-01-20 | 37 | 22.5d | 0d |  | 李兵 | 48h |
| 44 | 1.6.2.3.1 | 待参与信息 | 1d | 2014-01-16 | 2014-01-16 |  | 22.5d | 0d |  | 李兵 | 8h |
| 45 | 1.6.2.3.2 | 投票操作页 | 1d | 2014-01-17 | 2014-01-17 | 44 | 22.5d | 0d |  | 李兵 | 8h |
| 46 | 1.6.2.3.3 | 投票结果页 | 1d | 2014-01-20 | 2014-01-20 | 45 | 22.5d |  |  | 李兵 | 8h |
| 47 | 1.6.2.4 | **我的讨论** | 18.5d | 2014-01-21 | 2014-02-14 | 43 | 14.5d |  |  | 李兵 | 308h |
| 48 | 1.6.2.4.1 | 我的讨论 | 1d | 2014-01-21 | 2014-01-21 |  | 22.5d | 0d |  | 李兵 | 8h |
| 49 | 1.6.2.4.2 | **新建讨论** | 2d | 2014-01-22 | 2014-01-23 | 48 | 22.5d | 8d |  | 李兵 | 32h |
| 50 | 1.6.2.4.2.1 | 新建讨论 | 1.5d | 2014-01-22 | 2014-01-23 |  | 22.5d | 0d |  | 李兵 | 12h |
| 51 | 1.6.2.4.2.2 | 选择已有讨论 | 0.5d | 2014-01-23 | 2014-01-23 | 50 | 22.5d |  |  | 李兵 | 4h |

| ID | WBS | Task | Duration | Start | Finish | Predecessors | Total slack | Free slack | Constraint | Resources | Work |
| --- | --- | --- | --- | --- | --- | --- | --- | --- | --- | --- | --- |
| 52 | 1.6.2.4.3 | **讨论详情** | 7.5d | 2014-02-05 | 2014-02-14 | 49 | 14.5d |  |  | 李兵 | 120h |
| 53 | 1.6.2.4.3.1 | 讨论详情 | 6d | 2014-02-05 | 2014-02-12 |  | 14.5d | 0d | finish no earlier than 2014-02-12 | 李兵 | 48h |
| 54 | 1.6.2.4.3.2 | 谈论成员 | 1.5d | 2014-02-13 | 2014-02-14 | 53 | 14.5d |  |  | 李兵 | 12h |
| 55 | 1.7 | **个人中心** | 50d | 2013-12-28 | 2014-03-06 |  | 0d |  |  | 侯辉 | 1976h |
| 56 | 1.7.1 | 个人中心首页 | 2d | 2013-12-28 | 2013-12-30 |  | 21d | 0d | start no earlier than 2013-12-28 | 侯辉 | 16h |
| 57 | 1.7.2 | **我的账户** | 11d | 2013-12-31 | 2014-01-14 | 56 | 21d | 0d |  | 侯辉 | 176h |
| 58 | 1.7.2.1 | 我的账户－个人信息页（修改头像，姓名，性别，地区，签名） | 3d | 2013-12-31 | 2014-01-02 |  | 21d | 0d |  | 侯辉 | 24h |
| 59 | 1.7.2.2 | 我的账户－二维码名片页面 | 2d | 2014-01-03 | 2014-01-06 | 58 | 21d | 0d |  | 侯辉 | 16h |
| 60 | 1.7.2.3 | 我的账户－我的帐号页面 | 6d | 2014-01-07 | 2014-01-14 | 59 | 21d |  |  | 侯辉 | 48h |
| 61 | 1.7.3 | **微银行** | 16d | 2014-01-15 | 2014-02-05 | 57 | 21d |  |  | 侯辉 | 312h |
| 62 | 1.7.3.1 | 微银行－首页 | 3d | 2014-01-15 | 2014-01-17 |  | 21d | 0d |  | 侯辉 | 24h |
| 63 | 1.7.3.2 | **能量币充值** | 4d | 2014-01-20 | 2014-01-23 | 62 | 21d | 0d |  | 侯辉 | 64h |
| 64 | 1.7.3.2.1 | 微银行－能量币充值 | 1d | 2014-01-20 | 2014-01-20 |  | 21d | 0d |  | 侯辉 | 8h |
| 65 | 1.7.3.2.2 | 微银行－添加银行 | 2d | 2014-01-21 | 2014-01-22 | 64 | 21d | 0d |  | 侯辉 | 16h |
| 66 | 1.7.3.2.3 | 微银行－邮政网汇 | 1d | 2014-01-23 | 2014-01-23 | 65 | 21d |  |  | 侯辉 | 8h |
| 67 | 1.7.3.3 | **能量币提现** | 3d | 2014-01-24 | 2014-01-28 | 63 | 21d | 0d |  | 侯辉 | 48h |
| 68 | 1.7.3.3.1 | 微银行－能量币提现 | 2d | 2014-01-24 | 2014-01-27 |  | 21d | 0d |  | 侯辉 | 16h |
| 69 | 1.7.3.3.2 | 微银行－提现账户选择 | 1d | 2014-01-28 | 2014-01-28 | 68 | 21d |  |  | 侯辉 | 8h |
| 70 | 1.7.3.4 | 微银行－产品分红明细（产品详情，部落详情） | 3d | 2014-01-29 | 2014-01-31 | 67 | 21d | 0d |  | 侯辉 | 24h |
| 71 | 1.7.3.5 | 微银行－投资项目明细（产品详情，部落详情） | 3d | 2014-02-03 | 2014-02-05 | 70 | 21d |  |  | 侯辉 | 24h |
| 72 | 1.7.4 | **我的部落** | 23d | 2014-01-06 | 2014-02-05 |  | 21d |  |  | 谭晓芳 | 368h |
| 73 | 1.7.4.1 | 我的部落－首页 | 2d | 2014-01-06 | 2014-01-07 |  | 21d | 0d | start no earlier than 2014-01-06 | 谭晓芳 | 16h |
| 74 | 1.7.4.2 | 我的部落－部落描述（原始项目，普通成员） | 5d | 2014-01-08 | 2014-01-14 | 73 | 21d | 0d |  | 谭晓芳 | 40h |
| 75 | 1.7.4.3 | 我的部落－财务详情 | 4d | 2014-01-15 | 2014-01-20 | 74 | 21d | 0d |  | 谭晓芳 | 32h |
| 76 | 1.7.4.4 | 我的部落－产品 | 3d | 2014-01-21 | 2014-01-23 | 75 | 21d | 0d |  | 谭晓芳 | 24h |
| 77 | 1.7.4.5 | 我的部落－管理团队 | 2d | 2014-01-24 | 2014-01-27 | 76 | 21d | 0d |  | 谭晓芳 | 16h |
| 78 | 1.7.4.6 | 我的项目（我发起的，进行中的项目） | 3d | 2014-01-28 | 2014-01-30 | 77 | 21d | 0d |  | 谭晓芳 | 24h |
| 79 | 1.7.4.7 | 微超市 | 2d | 2014-01-31 | 2014-02-03 | 78 | 21d | 0d |  | 谭晓芳 | 16h |
| 80 | 1.7.4.8 | 微世界 | 2d | 2014-02-04 | 2014-02-05 | 79 | 21d |  |  | 谭晓芳 | 16h |

| ID | WBS | Task | Duration | Start | Finish | Predecessors | Total slack | Constraint | Resources | Work |
| --- | --- | --- | --- | --- | --- | --- | --- | --- | --- | --- |
| 81 | 1.7.5 | **微博** | 7d | 2014-01-06 | 2014-01-14 |  | 0d |  | 冷青章 | 112h |
| 82 | 1.7.5.1 | 微博－首页 | 3d | 2014-01-06 | 2014-01-08 |  | 0d | start no earlier than 2014-01-06 | 冷青章 | 24h |
| 83 | 1.7.5.2 | 微博－信息详情页 | 2d | 2014-01-09 | 2014-01-10 | 82 | 0d |  | 冷青章 | 16h |
| 84 | 1.7.5.3 | 微博－发表微博 | 2d | 2014-01-13 | 2014-01-14 | 83 | 0d |  | 冷青章 | 16h |
| 85 | 1.7.6 | **微信** | 14d | 2014-01-15 | 2014-02-03 | 81 | 0d |  | 冷青章 | 224h |
| 86 | 1.7.6.1 | 微信－首页（微信需要建立数据库去处理消息） | 4d | 2014-01-15 | 2014-01-20 |  | 0d |  | 冷青章 | 32h |
| 87 | 1.7.6.2 | 微信－详情页 | 10d | 2014-01-21 | 2014-02-03 | 86 | 0d |  | 冷青章 | 80h |
| 88 | 1.7.7 | **我的好友** | 7d | 2014-02-04 | 2014-02-12 | 85 | 0d |  | 冷青章 | 112h |
| 89 | 1.7.7.1 | 我的好友 | 3d | 2014-02-04 | 2014-02-06 |  | 0d |  | 冷青章 | 24h |
| 90 | 1.7.7.2 | 我的好友－附近的人 | 4d | 2014-02-07 | 2014-02-12 | 89 | 0d |  | 冷青章 | 32h |
| 91 | 1.7.8 | **我的收藏** | 3d | 2014-02-13 | 2014-02-17 | 88 | 0d |  | 冷青章 | 48h |
| 92 | 1.7.8.1 | 我的收藏（包括编辑，删除） | 3d | 2014-02-13 | 2014-02-17 |  | 0d |  | 冷青章 | 24h |
| 93 | 1.7.9 | **我的订单** | 4d | 2014-02-18 | 2014-02-21 | 91 | 0d |  | 冷青章 | 64h |
| 94 | 1.7.9.1 | 我的订单（包括详情，评价，付款，收货） | 4d | 2014-02-18 | 2014-02-21 |  | 0d |  | 冷青章 | 32h |
| 95 | 1.7.10 | **我的购物车** | 4d | 2014-02-24 | 2014-02-27 | 93 | 0d |  | 冷青章 | 64h |
| 96 | 1.7.10.1 | 我的购物车（包括详情，结算） | 4d | 2014-02-24 | 2014-02-27 |  | 0d |  | 冷青章 | 32h |
| 97 | 1.7.11 | **设置** | 5d | 2014-02-28 | 2014-03-06 | 95 | 0d |  | 冷青章 | 80h |
| 98 | 1.7.11.1 | 设置（设置页面对其他页面的更改） | 5d | 2014-02-28 | 2014-03-06 |  | 0d |  | 冷青章 | 40h |
